# tour_les_temps_cafe_management_system

Schedule from MS Project, 2025-02-25 to 2025-05-28, costs in $.

## Calendars

- Standard: Mon-Fri 08:00-12:00, 13:00-17:00; Sat-Sun off. Exceptions (off unless hours are given): 2025-04-30 to 2025-05-04 (Reunification Day and International Labor Day Holiday Period – 5 days).

## Resources

| Resource | Rate |
| --- | --- |
| Nguyễn Quang Vinh | 1.5 |
| Trương Thành Hiếu | 1.3 |
| Trần Đức Ngạn | 1.3 |
| Hosting & Domain | 120 |
| Third-party Service | 50 |
| Frontend Tools/Widgets | 30 |
| Training Materials | 100 |
| Implementation | 100 |
| System Maintenance | 300 |

## Schedule

| ID | WBS | Task | Duration | Start | Finish | Predecessors | Total slack | Resources | Work | Cost |
| --- | --- | --- | --- | --- | --- | --- | --- | --- | --- | --- |
| 1 | 1 | **1. Initiation & Planning** | 5d | 2025-02-25 | 2025-03-03 |  | 0d |  | 88h | 122.4 |
| 2 | 1.1 | 1.1. Conduct project kickoff meeting with stakeholders | 1d | 2025-02-25 | 2025-02-25 |  | 0d | Nguyễn Quang Vinh; Trần Đức Ngạn; Trương Thành Hiếu | 24h | 32.8 |
| 3 | 1.2 | 1.2. Finalize and agree on project scope & objectives | 2d | 2025-02-26 | 2025-02-27 | 2 | 0d | Nguyễn Quang Vinh; Trần Đức Ngạn | 32h | 44.8 |
| 4 | 1.3 | 1.3. Perform preliminary technical assessment of QR gateways | 2d | 2025-02-26 | 2025-02-27 | 2 | 0d | Trương Thành Hiếu | 16h | 20.8 |
| 5 | 1.4 | 1.4. Finalize and get approval for the Project Charter | 2d | 2025-02-28 | 2025-03-03 | 3, 4 | 0d | Nguyễn Quang Vinh | 16h | 24 |
| 6 | 2 | **2. Requirements & Analysis** | 5d? | 2025-03-04 | 2025-03-10 | 1 | 0d |  | 104h | 173.2 |
| 7 | 2.1 | 2.1. Conduct workshops for detailed requirement gathering | 2d | 2025-03-04 | 2025-03-05 | 5 | 0d | Nguyễn Quang Vinh; Trương Thành Hiếu | 32h | 44.8 |
| 8 | 2.2 | 2.2. Develop Functional Specification Document (FSD) | 2d | 2025-03-06 | 2025-03-07 | 7 | 0d | Trương Thành Hiếu | 16h | 20.8 |
| 9 | 2.3 | 2.3. Design User Interface (Mockups & Wireframes) | 2d | 2025-03-06 | 2025-03-07 | 7 | 0d | Trần Đức Ngạn; Frontend Tools/Widgets; Nguyễn Quang Vinh | 32h | 74.8 |
| 10 | 2.4 | 2.4. Present and get final approval for FSD & Mockups | 1d? | 2025-03-10 | 2025-03-10 | 8, 9 | 0d | Nguyễn Quang Vinh; Trần Đức Ngạn; Trương Thành Hiếu | 24h | 32.8 |
| 11 | 3 | **3. Design & Development** | 26d? | 2025-03-11 | 2025-04-15 | 6 | 0d |  | 408h | 726 |
| 12 | 3.1 | 3.1. Design system architecture and detailed database schema | 4d | 2025-03-11 | 2025-03-14 | 10 | 0d | Nguyễn Quang Vinh; Trương Thành Hiếu | 64h | 89.6 |
| 13 | 3.2 | 3.2. Set up and configure the development environment | 1d? | 2025-03-17 | 2025-03-17 | 12 | 0d | Nguyễn Quang Vinh; Hosting & Domain; Third-party Service | 8h | 182 |
| 14 | 3.3 | 3.3. Develop common modules (Authentication, Logging) | 3d | 2025-03-18 | 2025-03-20 | 13 | 0d | Trương Thành Hiếu | 24h | 31.2 |
| 15 | 3.4 | 3.4. Develop POS Module (Order Entry, Payment, Receipting) 6 | 10d | 2025-03-21 | 2025-04-03 | 14 | 0d | Trần Đức Ngạn | 80h | 104 |
| 16 | 3.5 | 3.5. Develop Employee Module (Scheduling, Timesheet, Payroll) | 7d | 2025-03-21 | 2025-03-31 | 14 | 11d | Trương Thành Hiếu | 56h | 72.8 |
| 17 | 3.6 | 3.6. Develop Inventory Module (Tracking, Alerts, Supplier Info, Recipe Module) | 8d | 2025-03-21 | 2025-04-01 | 14 | 2d | Nguyễn Quang Vinh | 64h | 96 |
| 18 | 3.7 | 3.7. Develop Basic Reporting Module | 5d | 2025-04-04 | 2025-04-10 | 15, 17 | 0d | Trương Thành Hiếu | 40h | 52 |
| 19 | 3.8 | 3.8. Conduct internal testing (Unit Tests) and write technical documentation | 3d | 2025-04-11 | 2025-04-15 | 18 | 0d | Nguyễn Quang Vinh; Trần Đức Ngạn; Trương Thành Hiếu | 72h | 98.4 |
| 20 | 4 | **4. Testing** | 13d | 2025-04-16 | 2025-05-07 | 11 | 0d |  | 256h | 345.6 |
| 21 | 4.1 | 4.1. Create Test Plan and Test Cases | 2d | 2025-04-16 | 2025-04-17 | 19 | 0d | Nguyễn Quang Vinh; Trương Thành Hiếu | 32h | 44.8 |
| 22 | 4.2 | 4.2. Conduct System Integration Testing and bug fixing | 5d | 2025-04-18 | 2025-04-24 | 21 | 0d | Trần Đức Ngạn; Trương Thành Hiếu | 80h | 104 |
| 23 | 4.3 | 4.3. Organize User Acceptance Testing (UAT) | 4d | 2025-04-25 | 2025-05-05 | 22 | 0d | Nguyễn Quang Vinh; Trần Đức Ngạn; Trương Thành Hiếu | 96h | 131.2 |
| 24 | 4.4 | 4.4. Fix UAT bugs and perform final quality review | 2d | 2025-05-06 | 2025-05-07 | 23 | 0d | Nguyễn Quang Vinh; Trần Đức Ngạn; Trương Thành Hiếu | 48h | 65.6 |

| ID | WBS | Task | Duration | Start | Finish | Predecessors | Total slack | Resources | Work | Cost |
| --- | --- | --- | --- | --- | --- | --- | --- | --- | --- | --- |
| 25 | 5 | **5. Training** | 5d? | 2025-05-08 | 2025-05-14 | 20 | 0d |  | 56h | 172.8 |
| 26 | 5.1 | 5.1. Prepare user manuals and training materials | 2d | 2025-05-08 | 2025-05-09 | 24 | 0d | Trần Đức Ngạn; Trương Thành Hiếu; Training Materials | 32h | 141.6 |
| 27 | 5.2 | 5.2. Conduct training for the management team | 1d? | 2025-05-12 | 2025-05-12 | 26 | 0d | Trần Đức Ngạn | 8h | 10.4 |
| 28 | 5.3 | 5.3. Conduct training for staff (Cashiers, Baristas, Servers) | 2d | 2025-05-13 | 2025-05-14 | 27 | 0d | Trần Đức Ngạn | 16h | 20.8 |
| 29 | 6 | **6. Deployment & Go-live Support** | 10d? | 2025-05-15 | 2025-05-28 | 25 | 0d |  | 184h | 653.6 |
| 30 | 6.1 | 6.1. Prepare the production environment | 2d | 2025-05-15 | 2025-05-16 | 28 | 0d | Nguyễn Quang Vinh; Trần Đức Ngạn | 32h | 44.8 |
| 31 | 6.2 | 6.2. Perform initial data migration (Menu, Inventory, Staff) | 1d? | 2025-05-19 | 2025-05-19 | 30 | 0d | Trần Đức Ngạn | 8h | 10.4 |
| 32 | 6.3 | 6.3. Deploy system to the live environment (Go-live) | 1d? | 2025-05-20 | 2025-05-20 | 31 | 0d | Nguyễn Quang Vinh; Trần Đức Ngạn; Implementation | 16h | 122.4 |
| 33 | 6.4 | 6.4. Monitor system and provide on-site support for the first week | 5d | 2025-05-21 | 2025-05-27 | 32 | 0d | Nguyễn Quang Vinh; Trần Đức Ngạn; Trương Thành Hiếu | 120h | 164 |
| 34 | 6.5 | 6.5. Conduct final project handover and closure meeting | 1d? | 2025-05-28 | 2025-05-28 | 33 | 0d | Nguyễn Quang Vinh; System Maintenance | 8h | 312 |
